# PSN_Coding plan v0.1

Schedule from MS Project, 2011-02-28 to 2011-04-09.

## Calendars

- Standard: Mon-Sun 08:00-12:00, 13:00-17:00.

## Resources

| Resource |
| --- |
| QuangLM |
| QuocNM |
| DungTQ |
| QuangVT |
| VuongNM |

## Schedule

| ID | WBS | Task | Duration | Start | Finish | Predecessors | Total slack | Free slack | Resources | Work |
| --- | --- | --- | --- | --- | --- | --- | --- | --- | --- | --- |
| 1 | 1 | **PSN Coding phase** | 41d | 2011-02-28 | 2011-04-09 |  | 0d |  |  | 1352h |
| 2 | 1.1 | **Admin pages** | 40d | 2011-02-28 | 2011-04-08 |  | 0d |  |  | 424h |
| 3 | 1.1.1 | Manage roles | 5d | 2011-02-28 | 2011-03-04 |  | 4d | 0d | DungTQ | 40h |
| 4 | 1.1.2 | Manage users | 7d | 2011-03-11 | 2011-03-17 | 11 | 4d | 0d | DungTQ | 56h |
| 5 | 1.1.3 | Manage address parts | 8d | 2011-02-28 | 2011-03-07 |  | 1d | 0d | QuocNM | 64h |
| 6 | 1.1.4 | Manage spam places | 3d | 2011-03-04 | 2011-03-06 | 7 | 4d | 0d | QuangLM | 24h |
| 7 | 1.1.5 | Manage spam comments | 4d | 2011-02-28 | 2011-03-03 |  | 4d | 0d | QuangLM | 32h |
| 8 | 1.1.6 | Manage spam questions | 3d | 2011-03-07 | 2011-03-09 | 6 | 4d | 0d | QuangLM | 24h |
| 9 | 1.1.7 | Manage spam answers | 3d | 2011-03-10 | 2011-03-12 | 8 | 4d | 0d | QuangLM | 24h |
| 10 | 1.1.8 | Manage unlocated places | 3d | 2011-02-28 | 2011-03-02 |  | 0d |  | QuangVT | 24h |
| 11 | 1.1.9 | Manage featured places | 6d | 2011-03-05 | 2011-03-10 | 3 | 4d | 0d | DungTQ | 48h |
| 12 | 1.1.10 | Manage Contacts | 3d | 2011-03-18 | 2011-03-20 | 4 | 4d | 0d | DungTQ | 24h |
| 13 | 1.1.11 | Manage spam images | 2d | 2011-04-07 | 2011-04-08 | 40 | 1d |  | QuocNM | 16h |
| 14 | 1.1.12 | Manage places | 3d | 2011-03-30 | 2011-04-01 | 22 | 4d | 0d | VuongNM | 24h |
| 15 | 1.1.13 | Manage place images | 3d | 2011-04-02 | 2011-04-04 | 14 | 4d |  | VuongNM | 24h |
| 16 | 1.2 | **Users** | 30d | 2011-02-28 | 2011-03-29 |  | 5d |  |  | 240h |
| 17 | 1.2.1 | Login | 7d | 2011-02-28 | 2011-03-06 |  | 14d | 0d | VuongNM | 56h |
| 18 | 1.2.2 | Logout | 1d | 2011-03-07 | 2011-03-07 | 17 | 14d | 0d | VuongNM | 8h |
| 19 | 1.2.3 | Register | 6d | 2011-03-08 | 2011-03-13 | 18 | 7d | 0d | VuongNM | 48h |
| 20 | 1.2.4 | Change my info | 5d | 2011-03-14 | 2011-03-18 | 19 | 7d | 0d | VuongNM | 40h |
| 21 | 1.2.5 | User page | 8d | 2011-03-19 | 2011-03-26 | 20 | 7d | 0d | VuongNM | 64h |
| 22 | 1.2.6 | Forgot password | 3d | 2011-03-27 | 2011-03-29 | 21 | 4d | 0d | VuongNM | 24h |
| 23 | 1.3 | Create places | 7d | 2011-03-08 | 2011-03-14 | 5 | 1d | 0d | QuocNM | 56h |
| 24 | 1.4 | **Search places** | 12d | 2011-03-03 | 2011-03-14 |  | 0d |  |  | 96h |
| 25 | 1.4.1 | Quick search | 5d | 2011-03-03 | 2011-03-07 | 10 | 0d |  | QuangVT | 40h |
| 26 | 1.4.2 | Advanced search | 3d | 2011-03-08 | 2011-03-10 | 25 | 0d |  | QuangVT | 24h |
| 27 | 1.4.3 | Search result page | 4d | 2011-03-11 | 2011-03-14 | 26 | 0d |  | QuangVT | 32h |

| ID | WBS | Task | Duration | Start | Finish | Predecessors | Total slack | Free slack | Resources | Work |
| --- | --- | --- | --- | --- | --- | --- | --- | --- | --- | --- |
| 28 | 1.5 | **Place details page** | 19d | 2011-03-15 | 2011-04-02 |  | 0d |  |  | 152h |
| 29 | 1.5.1 | Details | 7d | 2011-03-15 | 2011-03-21 | 27 | 0d |  | QuangVT | 56h |
| 30 | 1.5.2 | Rate/mark visisted/report place | 2d | 2011-03-22 | 2011-03-23 | 29 | 0d |  | QuangVT | 16h |
| 31 | 1.5.3 | Comment | 2d | 2011-03-24 | 2011-03-25 | 30 | 0d |  | QuangVT | 16h |
| 32 | 1.5.4 | Report/vote comments | 2d | 2011-03-26 | 2011-03-27 | 31 | 0d |  | QuangVT | 16h |
| 33 | 1.5.5 | Post to Facebook/Twitter | 1d | 2011-03-28 | 2011-03-28 | 32 | 0d |  | QuangVT | 8h |
| 34 | 1.5.6 | Upload images | 3d | 2011-03-29 | 2011-03-31 | 33 | 0d |  | QuangVT | 24h |
| 35 | 1.5.7 | Report/vote images | 2d | 2011-04-01 | 2011-04-02 | 34 | 0d |  | QuangVT | 16h |
| 36 | 1.6 | Edit places | 5d | 2011-03-15 | 2011-03-19 | 23 | 1d | 0d | QuocNM | 40h |
| 37 | 1.7 | Change places location | 2d | 2011-03-20 | 2011-03-21 | 36 | 1d | 0d | QuocNM | 16h |
| 38 | 1.8 | View revision history | 10d | 2011-03-22 | 2011-03-31 | 37 | 1d | 0d | QuocNM | 80h |
| 39 | 1.9 | View suggested edits | 3d | 2011-04-01 | 2011-04-03 | 38 | 1d | 0d | QuocNM | 24h |
| 40 | 1.10 | Accept/reject a suggested edit | 3d | 2011-04-04 | 2011-04-06 | 39 | 1d | 0d | QuocNM | 24h |
| 41 | 1.11 | Index page | 2d | 2011-04-03 | 2011-04-04 | 35 | 0d |  | QuangVT | 16h |
| 42 | 1.12 | Contact Page | 3d | 2011-03-21 | 2011-03-23 | 12 | 14d | 0d | DungTQ | 24h |
| 43 | 1.13 | Help page | 2d | 2011-03-24 | 2011-03-25 | 42 | 14d |  | DungTQ | 16h |
| 44 | 1.14 | **Q&A** | 13d | 2011-03-13 | 2011-03-25 |  | 15d |  |  | 104h |
| 45 | 1.14.1 | List questions | 3d | 2011-03-13 | 2011-03-15 | 9 | 14d | 0d | QuangLM | 24h |
| 46 | 1.14.2 | Post a question | 3d | 2011-03-16 | 2011-03-18 | 45 | 14d | 0d | QuangLM | 24h |
| 47 | 1.14.3 | **Question page** | 7d | 2011-03-19 | 2011-03-25 |  | 15d |  |  | 56h |
| 48 | 1.14.3.1 | Details | 3d | 2011-03-19 | 2011-03-21 | 46 | 14d | 0d | QuangLM | 24h |
| 49 | 1.14.3.2 | Report/vote questions | 1d | 2011-03-22 | 2011-03-22 | 48 | 14d | 0d | QuangLM | 8h |
| 50 | 1.14.3.3 | Answer | 2d | 2011-03-23 | 2011-03-24 | 49 | 14d | 0d | QuangLM | 16h |
| 51 | 1.14.3.4 | Report/vote answers | 1d | 2011-03-25 | 2011-03-25 | 50 | 14d |  | QuangLM | 8h |
| 52 | 1.15 | Other work | 5d | 2011-04-05 | 2011-04-09 | 41 | 0d |  | QuangVT | 40h |
